# 雷龙

Schedule from a web Gantt chart, 2025-07-17 to 2026-02-28.
Every day is a working day

## Schedule

| ID | WBS | Task | Duration | Start | Finish | Predecessors | Complete | Status |
| --- | --- | --- | --- | --- | --- | --- | --- | --- |
| 2 | 1 | **设计** | 40d | 2025-07-17 | 2025-08-25 |  | 100% | done |
| 3 | 1.1 | Kick OFF | 2d | 2025-07-17 | 2025-07-18 |  | 100% | done |
| 4 | 1.2 | PDK layout | 7d | 2025-07-17 | 2025-07-23 |  | 100% | done |
| 5 | 1.3 | CP probe card--悬臂针 | 33d | 2025-07-17 | 2025-08-18 |  | 100% | done |
| 6 | 1.4 | CP probe card--垂直针 | 40d | 2025-07-17 | 2025-08-25 |  | 100% | done |
| 7 | 2 | **摸底研究** | 60d | 2025-07-28 | 2025-09-25 |  | 100% | done |
| 8 | 2.1 | **ZH 摸底** | 60d | 2025-07-28 | 2025-09-25 |  | 100% | done |
| 9 | 2.1.1 | WAFER PROCESS | 14d | 2025-07-28 | 2025-08-10 |  | 100% | done |
| 10 | 2.1.2 | PKG | 30d | 2025-08-12 | 2025-09-10 |  | 100% | done |
| 11 | 2.1.3 | FT | 2d | 2025-09-11 | 2025-09-12 |  | 100% | done |
| 12 | 2.1.4 | AE 测试 | 13d | 2025-09-13 | 2025-09-25 |  | 100% | done |
| 13 | 2.2 | **Suz 摸底** | 59d | 2025-07-29 | 2025-09-25 |  | 100% | done |
| 14 | 2.2.1 | Wafer process | 18d | 2025-07-29 | 2025-08-15 |  | 100% | done |
| 15 | 2.2.2 | PKG | 23d | 2025-08-19 | 2025-09-10 |  | 100% | done |
| 16 | 2.2.3 | FT | 2d | 2025-09-11 | 2025-09-12 |  | 100% | done |
| 17 | 2.2.4 | AE 测试 | 14d | 2025-09-12 | 2025-09-25 |  | 100% | done |
| 18 | 3 | **pre qual. lot** | 135d | 2025-08-20 | 2026-01-01 |  | 38% |  |
| 19 | 3.1 | WAFER PROCESS | 17d | 2025-08-20 | 2025-09-05 |  | 100% | done |
| 20 | 3.2 | CP test | 14d | 2025-09-06 | 2025-09-19 | 19 | 100% | done |
| 21 | 3.3 | PKG | 23d | 2025-09-25 | 2025-10-17 |  | 100% | done |
| 22 | 3.4 | FT | 6d | 2025-10-18 | 2025-10-23 | 21 | 100% | done |
| 23 | 3.5 | RE 168H | 15d | 2025-10-23 | 2025-11-06 |  | 100% | done |
| 24 | 3.6 | RE 1000H | 70d | 2025-10-24 | 2026-01-01 | 22 |  |  |
| 25 | 3.7 | PE bench test | 16d | 2025-10-24 | 2025-11-08 | 22 |  |  |

| ID | WBS | Task | Duration | Start | Finish | Predecessors | Complete | Status |
| --- | --- | --- | --- | --- | --- | --- | --- | --- |
| 26 | 4 | **2nd/3rd Qual. lot** | 129d | 2025-10-23 | 2026-02-28 |  | 43% |  |
| 27 | 4.1 | WAFER PROCESS | 19d | 2025-10-23 | 2025-11-10 |  | 100% |  |
| 28 | 4.2 | CP test | 23d | 2025-11-11 | 2025-12-03 | 27 | 100% | waiting |
| 29 | 4.3 | PKG+FT | 25d | 2025-12-04 | 2025-12-28 | 28 | 73% | waiting |
| 30 | 4.4 | CSR | 1d | 2025-12-29 | 2025-12-29 | 29 |  | waiting |
| 31 | 4.5 | PE Bench test | 9d | 2025-12-29 | 2026-01-06 | 29 |  | waiting |
| 32 | 4.6 | RE 1000H | 62d | 2025-12-29 | 2026-02-28 | 29 |  | waiting |
| 33 | 5 | **Window lot** | 66d | 2025-10-28 | 2026-01-01 |  |  |  |
| 34 | 5.1 | WAFER PRCESS | 24d | 2025-10-28 | 2025-11-20 |  |  |  |
| 35 | 5.2 | CP test | 7d | 2025-11-21 | 2025-11-27 | 34 |  | waiting |
| 36 | 5.3 | PKG+FT | 26d | 2025-11-28 | 2025-12-23 | 35 |  | waiting |
| 37 | 5.4 | CSR | 9d | 2025-12-24 | 2026-01-01 | 36 |  | waiting |
| 38 | 5.5 | PE bench | 1d | 2025-12-24 | 2025-12-24 | 36 |  | waiting |
